gantt
  title 顧客サービスシステム導入――統合工程表（架空事例・2026-10-14時点）
  dateFormat YYYY-MM-DD
  axisFormat %m/%d
  tickInterval 1week
  todayMarker off
  accTitle: 先行検証6組の基準と実績・予測、本導入計画案の全体
  accDescr: 集計基準日は2026-10-14。実績があるのは要件確認と先行権限確認のみ。API認証401、重複キー候補80件、要員不足3人日は未解決。本導入30項目は未承認の計画案で、判断予定は承認済みを意味しない。前提未達なら再計画と再承認が必要。
  %% taskobo-gantt-status {"schema":"taskobo.gantt-status/v1","calendar":"calendar-days","asOf":"2026-10-14","statusMarker":"status_date","items":[{"baseline":"b_requirements","current":"a_requirements","baselineEnd":"2026-10-08","finish":"2026-10-10","stage":"done"},{"baseline":"b_api","current":"f_api","baselineEnd":"2026-10-12","finish":"2026-10-18","stage":"forecast"},{"baseline":"b_migration","current":"f_migration","baselineEnd":"2026-10-20","finish":"2026-10-23","stage":"forecast"},{"baseline":"b_test","current":"f_test","baselineEnd":"2026-10-26","finish":"2026-10-26","stage":"forecast","risk":true},{"baseline":"b_training","current":"f_training","baselineEnd":"2026-10-23","finish":"2026-10-22","stage":"forecast"},{"baseline":"b_access","current":"a_access","baselineEnd":"2026-10-11","finish":"2026-10-11","stage":"done"}],"plannedTasks":["vendor_reply","decision_oct16","night_contacts","trial_gate","p_biz","p_scope","p_perm","p_plan","p_baseline","p_ui","p_intake","p_history","p_sla","p_feature","p_clean","p_api","p_migration","p_rehearsal","p_env","p_monitor","p_threat","p_security","p_integration","p_performance","p_uat","p_retest","p_accepted","p_training","p_runbook","p_dress","p_go","p_release","p_support","p_finish"]}
  section 固定の集計基準日
  集計基準日2026-10-14 :milestone, status_date, 2026-10-14, 0d
  section 先行検証――要件確認
  基準終了10/08 :b_requirements, 2026-10-01, 2026-10-08
  実績終了10/10／2日遅延 :done, a_requirements, 2026-10-01, 2026-10-10
  section 先行検証――CRM接続／課題01
  基準終了10/12 :b_api, 2026-10-06, 2026-10-12
  予測終了10/18／集計基準日時点で期限超過 :active, f_api, 2026-10-06, 2026-10-18
  section 先行検証――試行移行／課題02
  基準終了10/20 :b_migration, 2026-10-09, 2026-10-20
  予測終了10/23／基準より3日遅延 :active, f_migration, 2026-10-09, 2026-10-23
  section 先行検証――結合テスト／課題04・06
  基準終了10/26 :b_test, 2026-10-14, 2026-10-26
  予測終了10/26／日付は不変だが要員リスクあり :active, f_test, 2026-10-14, 2026-10-26
  section 先行検証――主要利用者の教育
  基準終了10/23 :b_training, 2026-10-15, 2026-10-23
  予測終了10/22／基準より1日前倒し :active, f_training, 2026-10-15, 2026-10-22
  section 先行検証――権限確認
  基準終了10/11 :b_access, 2026-10-05, 2026-10-11
  実績終了10/11／先行検証環境のみ :done, a_access, 2026-10-05, 2026-10-11
  section 先行検証――要判断事項・未承認
  要判断／ベンダーの原因・復旧案の回答 :milestone, vendor_reply, 2026-10-15, 0d
  要判断／重複ルール・SMS変更・要員配置 :milestone, decision_oct16, 2026-10-16, 0d
  要判断／夜間の主担当と副担当を確定 :milestone, night_contacts, 2026-10-20, 0d
  要判断／先行検証の完了判定 :milestone, trial_gate, 2026-10-26, 0d
  section 本導入の計画案――基準と承認
  計画案／業務・例外処理フロー :p_biz, 2026-10-19, 2026-10-26
  計画案／受入基準とSLA :p_scope, 2026-10-26, 2026-10-29
  計画案／権限とデータ定義 :p_perm, 2026-10-21, 2026-10-28
  計画案／実行計画とリスクレビュー :p_plan, 2026-10-26, 2026-10-29
  計画案／基準の再承認 :milestone, p_baseline, 2026-10-29, 0d
  section 本導入の計画案――業務機能
  計画案／画面と操作の設計 :p_ui, 2026-10-29, 2026-11-06
  計画案／受付登録と作業割当て :p_intake, 2026-11-06, 2026-11-18
  計画案／処理と承認の履歴 :p_history, 2026-11-06, 2026-11-18
  計画案／SLA通知と月次帳票 :p_sla, 2026-11-18, 2026-11-24
  計画案／機能レビューの判断 :milestone, p_feature, 2026-11-24, 0d
  section 本導入の計画案――データと連携
  計画案／移行分析とデータ整備 :p_clean, 2026-10-29, 2026-11-09
  計画案／CRM接続と再送制御 :p_api, 2026-10-29, 2026-11-12
  計画案／移行スクリプト :p_migration, 2026-11-09, 2026-11-17
  計画案／移行リハーサルと照合 :p_rehearsal, 2026-11-17, 2026-11-23
  section 本導入の計画案――安全と基盤
  計画案／環境と権限設定 :p_env, 2026-10-29, 2026-11-04
  計画案／監視とバックアップ :p_monitor, 2026-11-04, 2026-11-12
  計画案／脅威分析と防御設計 :p_threat, 2026-10-29, 2026-11-05
  計画案／脆弱性と権限の検証 :p_security, 2026-11-24, 2026-11-30
  section 本導入の計画案――独立テストと業務受入れ
  計画案／結合・異常経路テスト :p_integration, 2026-11-24, 2026-11-30
  計画案／負荷・夜間バッチ検証 :p_performance, 2026-11-30, 2026-12-03
  計画案／業務受入テスト :p_uat, 2026-12-03, 2026-12-09
  計画案／重大欠陥の修正と再検証 :p_retest, 2026-12-09, 2026-12-14
  計画案／業務受入れの判断 :milestone, p_accepted, 2026-12-14, 0d
  section 本導入の計画案――引継ぎと本番移行
  計画案／利用者教育とサービス窓口 :p_training, 2026-11-24, 2026-12-01
  計画案／運用と切戻しの手順 :p_runbook, 2026-11-12, 2026-11-18
  計画案／切替リハーサル :p_dress, 2026-12-14, 2026-12-16
  計画案／本番移行または延期の判断 :milestone, p_go, 2026-12-16, 0d
  計画案／夜間移行と本番リリース :p_release, 2026-12-16, 2026-12-17
  計画案／稼働確認と初期支援 :p_support, 2026-12-17, 2026-12-24
  計画案／運用引受けの判断 :milestone, p_finish, 2026-12-24, 0d
